# Project_Schedule_rev_2

How a schedule from MS Project changed from version to version. A marks actual dates.

## Version 1 (saved 2014-11-10)

Note of the change: Revised Project Schedule

| ID | WBS | Task | Duration | Start | Finish | Predecessors | Complete | Total float | Constraint |
| --- | --- | --- | --- | --- | --- | --- | --- | --- | --- |
| 1 | 1 | **Wireless Apparatus for Real-Time Classroom feedback** | 75d | 2014-09-29 | 2014-12-12 |  | 53% |  |  |
| 2 | 1.1 | **Project Documentation** | 57d | 2014-10-09 A | 2014-12-04 |  | 63% |  |  |
| 3 | 1.1.1 | **Project Proposal** | 5d? | 2014-10-09 A | 2014-10-13 A |  | 100% |  |  |
| 4 |  | Write Project Proposal | 3d | 2014-10-09 A | 2014-10-11 A |  | 100% |  | start no earlier than 2014-10-09 |
| 5 |  | Review Project Proposal | 0d | 2014-10-12 A | 2014-10-12 A | 4 | 100% |  | start no earlier than 2014-10-12 |
| 6 |  | Revise Project Proposal | 1d? | 2014-10-13 A | 2014-10-13 A | 5 | 100% |  | finish no earlier than 2014-10-13 |
| 7 |  | Submit Project Proposal | 0d | 2014-10-13 A | 2014-10-13 A | 6 | 100% |  | start no earlier than 2014-10-13 |
| 8 | 1.1.2 | **Project Design Specifications** | 5d? | 2014-10-23 A | 2014-10-27 A |  | 100% |  |  |
| 9 |  | Write Project Design Specifications | 3d? | 2014-10-23 A | 2014-10-25 A |  | 100% |  | start no earlier than 2014-10-23 |
| 10 |  | Review Project Design Specifications | 1d? | 2014-10-26 A | 2014-10-26 A | 9 | 100% |  | start no earlier than 2014-10-26 |
| 11 |  | Revise Project Design Specifications | 1d? | 2014-10-27 A | 2014-10-27 A | 10 | 100% |  | start no earlier than 2014-10-27 |
| 12 |  | Submit Project Design Specifications | 0d | 2014-10-27 A | 2014-10-27 A | 11 | 100% |  | start no earlier than 2014-10-27 |
| 13 | 1.1.3 | **Project Schedule** | 5d? | 2014-11-06 A | 2014-11-10 |  | 75% | 24d |  |
| 14 |  | Write Project Schedule | 3d? | 2014-11-06 A | 2014-11-08 A |  | 100% |  | start no earlier than 2014-11-06 |
| 15 |  | Review Project Schedule | 0d | 2014-11-09 A | 2014-11-09 A | 14 | 100% |  | start no earlier than 2014-11-09 |
| 16 |  | Revise Project Schedule | 1d? | 2014-11-10 | 2014-11-10 | 15 |  | 24d | start no earlier than 2014-11-10 |
| 17 |  | Submit Project Schedule | 0d | 2014-11-10 | 2014-11-10 | 16 |  | 24d | start no earlier than 2014-11-10 |
| 18 | 1.1.4 | **System Design and Modeling** | 5d | 2014-11-13 | 2014-11-17 |  |  |  |  |
| 19 |  | Write System Design and Modeling | 3d | 2014-11-13 | 2014-11-15 |  |  | 26d | start no earlier than 2014-11-13 |
| 20 |  | Review System Design and Modeling | 0d | 2014-11-16 | 2014-11-16 | 19 |  | 26d | start no earlier than 2014-11-16 |
| 21 |  | Revise System Design and Modeling | 1d? | 2014-11-17 | 2014-11-17 | 20 |  | 25d | start no earlier than 2014-11-17 |
| 22 |  | Submit System Design and Modeling | 0d | 2014-11-17 | 2014-11-17 | 21 |  | 25d | start no earlier than 2014-11-17 |
| 23 | 1.1.5 | **Test Plan** | 2d | 2014-11-22 | 2014-11-24 |  |  | 11d |  |
| 24 |  | Write Test Plan | 1d | 2014-11-22 | 2014-11-22 |  |  | 11d | start no earlier than 2014-11-22 |
| 25 |  | Review Test Plan | 0d | 2014-11-23 | 2014-11-23 | 24 |  | 11d | start no earlier than 2014-11-23 |
| 26 |  | Revise Test Plan | 1d | 2014-11-23 | 2014-11-23 | 25 |  | 11d |  |
| 27 |  | Submit Test Plan | 0d | 2014-11-24 | 2014-11-24 | 26 |  | 11d | start no earlier than 2014-11-24 |
| 28 | 1.2 | **Research and Feasibility** | 20d | 2014-10-10 A | 2014-10-29 A |  | 100% |  |  |
| 29 |  | MCU Options | 5d? | 2014-10-10 A | 2014-10-14 A |  | 100% |  | finish no earlier than 2014-10-14 |
| 30 |  | Decide on CC430 MCU | 0d | 2014-10-14 A | 2014-10-14 A | 29 | 100% |  | start no earlier than 2014-10-14 |
| 31 |  | Button Technology Designs | 3d | 2014-10-15 A | 2014-10-17 A |  | 100% |  | start no earlier than 2014-10-15 |
| 32 |  | Resistive Button Prototype | 2d | 2014-10-18 A | 2014-10-19 A | 31 | 100% |  | start no earlier than 2014-10-17 |
| 33 |  | Antenna Geometry | 3d | 2014-10-19 A | 2014-10-21 A |  | 100% |  | finish no earlier than 2014-10-21 |
| 34 |  | Antenna Field Simulation | 1d | 2014-10-29 A | 2014-10-29 A | 33 | 100% |  | start no earlier than 2014-10-29 |
| 35 |  | MCU Programming Interface | 3d | 2014-10-26 A | 2014-10-28 A |  | 100% |  | start no earlier than 2014-10-26 |
| 36 |  | Decide on Code Composer Studio v6 | 0d | 2014-10-28 A | 2014-10-28 A | 35 | 100% |  | start no earlier than 2014-10-28 |
| 37 |  | GUI Languages | 3d | 2014-10-15 A | 2014-10-17 A |  | 100% |  | finish no earlier than 2014-10-17 |
| 38 |  | Decide on Python for GUI Language | 0d | 2014-10-17 A | 2014-10-17 A | 37 | 100% |  | start no earlier than 2014-10-17 |
| 39 | 1.3 | **Schematic and Layout** | 20d? | 2014-10-22 A | 2014-11-10 |  | 92% | 32d |  |
| 40 | 1.3.1 | **Schematic** | 12d? | 2014-10-22 A | 2014-11-02 A |  | 100% |  |  |
| 41 |  | Symbol Creation | 3d? | 2014-10-22 A | 2014-10-24 A |  | 100% |  | finish no earlier than 2014-10-24 |
| 42 |  | Schematic Design | 5d? | 2014-10-25 A | 2014-10-29 A | 41 | 100% |  | finish no earlier than 2014-10-26 |
| 43 |  | Schematic Design Review | 1d? | 2014-10-30 A | 2014-10-30 A | 42 | 100% |  | start no earlier than 2014-10-27 |
| 44 |  | Schematic Design Revision | 2d? | 2014-10-31 A | 2014-11-01 A | 43 | 100% |  | start no earlier than 2014-10-28 |
| 45 |  | Final Schematic Design Review | 1d? | 2014-11-02 A | 2014-11-02 A | 44 | 100% |  |  |
| 46 | 1.3.2 | **Layout** | 20d? | 2014-10-22 A | 2014-11-10 |  | 83% | 32d |  |
| 47 |  | Footprint Creation | 4d? | 2014-10-22 A | 2014-10-25 A |  | 100% |  | finish no earlier than 2014-10-25 |
| 48 |  | Layout Design | 3d? | 2014-11-01 A | 2014-11-03 A | 47 | 100% |  | finish no earlier than 2014-11-03 |
| 49 |  | Layout Design Review | 1d? | 2014-11-04 A | 2014-11-04 A | 48 | 100% |  |  |
| 50 |  | Layout Design Revision | 1d? | 2014-11-05 A | 2014-11-05 A | 49 | 100% |  |  |
| 51 |  | Secondary Layout Review | 1d? | 2014-11-06 A | 2014-11-06 A | 50 | 100% |  |  |
| 52 |  | Secondary Layout Revision | 2d? | 2014-11-09 | 2014-11-10 | 51 |  | 32d | start no earlier than 2014-11-09 |
| 53 |  | Boards to Fab | 0d | 2014-11-10 | 2014-11-10 | 52 |  | 32d | start no earlier than 2014-11-10 |
| 54 | 1.4 | **Assembly and Debug** | 6d? | 2014-11-17 | 2014-11-22 |  |  | 20d |  |
| 55 |  | Boards Back From Fab | 0d | 2014-11-17 | 2014-11-17 |  |  | 20d | start no earlier than 2014-11-17 |
| 56 |  | RF Matching Network Calibration | 2d? | 2014-11-17 | 2014-11-18 | 55 |  | 20d | start no earlier than 2014-11-17 |
| 57 |  | Stencil generation | 1d? | 2014-11-19 | 2014-11-19 | 56 |  | 20d |  |
| 58 |  | Board Stuff & Reflow | 2d | 2014-11-20 | 2014-11-21 | 57 |  | 20d |  |
| 59 |  | MCU "Hello, World!" | 1d? | 2014-11-22 | 2014-11-22 | 58 |  | 20d |  |
| 60 | 1.5 | **GUI and Host-PC Programming** | 24d? | 2014-10-29 A | 2014-11-21 |  | 42% | 21d |  |
| 61 |  | Design GUI Layout | 4d? | 2014-10-29 A | 2014-11-01 A |  | 100% |  | finish no earlier than 2014-11-01 |
| 62 |  | Review GUI Layout | 1d? | 2014-11-02 A | 2014-11-02 A | 61 | 100% |  | start no earlier than 2014-11-02 |
| 63 |  | Revise GUI Layout | 2d | 2014-11-03 A | 2014-11-04 A | 62 | 100% |  |  |
| 64 |  | Prototype Basic GUI | 3d | 2014-11-05 A | 2014-11-07 A | 63 | 100% |  |  |
| 65 |  | Add Menu Features | 5d? | 2014-11-08 | 2014-11-12 | 64 |  | 21d | start no earlier than 2014-11-08 |
| 66 |  | Establish Serial Comm via USB to Base Station | 5d | 2014-11-13 | 2014-11-17 | 65 |  | 21d |  |
| 67 |  | Program Packet Parser | 4d | 2014-11-18 | 2014-11-21 | 66 |  | 21d |  |
| 68 | 1.6 | **Low-Level Software** | 8d | 2014-11-19 | 2014-11-26 |  |  |  |  |
| 69 |  | Establish Communication Between Satellite Unit and Base Station | 3d? | 2014-11-19 | 2014-11-21 |  |  | 2d | finish no earlier than 2014-11-21 |
| 70 |  | Develop Code for Taking Button Input on Satellite Board | 3d | 2014-11-22 | 2014-11-24 | 69 |  | 2d |  |

| ID | WBS | Task | Duration | Start | Finish | Predecessors | Total float | Constraint |
| --- | --- | --- | --- | --- | --- | --- | --- | --- |
| 71 | 1.7 | **Testing** | 16d | 2014-11-25 | 2014-12-10 |  |  |  |
| 72 |  | Test Communication between Satellite and Base Station | 2d | 2014-11-25 | 2014-11-26 |  | 0d | start no earlier than 2014-11-25 |
| 73 |  | Test Hardware | 4d | 2014-11-27 | 2014-11-30 | 72 | 0d | finish no earlier than 2014-11-30 |
| 74 |  | Test Software | 4d | 2014-12-01 | 2014-12-04 | 73 | 0d | finish no earlier than 2014-11-30 |
| 75 |  | Test Entire System | 3d | 2014-12-05 | 2014-12-07 | 74 | 0d |  |
| 76 |  | Final Debug and Testing | 3d | 2014-12-08 | 2014-12-10 | 75 | 0d |  |
| 77 | 1.8 | **Presentation** | 10d | 2014-12-03 | 2014-12-12 |  |  |  |
| 78 |  | Compile Material for Presentation | 2d | 2014-12-03 | 2014-12-04 |  | 5d |  |
| 79 |  | Format Presentation | 2d | 2014-12-05 | 2014-12-06 | 78 | 5d |  |
| 80 |  | Practice Presentation | 1d | 2014-12-11 | 2014-12-11 | 79 | 1d | start no earlier than 2014-12-11 |
| 81 |  | Demo | 0d | 2014-12-11 | 2014-12-11 | 80 | 1d |  |

## Version 2 (saved 2014-11-10)

Note of the change: Project Schedule rev 2

Last finish stays 2014-12-12.

Changed:

| ID | Task | Start | Finish | Duration | Complete | Total float | Other |
| --- | --- | --- | --- | --- | --- | --- | --- |
| 1 | **Wireless Apparatus for Real-Time Classroom feedback** |  |  |  | 53% → 54% |  |  |
| 2 | **Project Documentation** |  | 2014-12-04 → 2014-11-24 (-10d) | 57d → 47d | 63% → 61% |  |  |
| 3 | **Project Proposal** |  |  | 5d? → 5d |  |  |  |
| 6 | Revise Project Proposal |  |  | 1d? → 1d |  |  |  |
| 8 | **Project Design Specifications** |  |  | 5d? → 5d |  |  |  |
| 9 | Write Project Design Specifications |  |  | 3d? → 3d |  |  |  |
| 10 | Review Project Design Specifications |  |  | 1d? → 0d |  |  |  |
| 11 | Revise Project Design Specifications |  |  | 1d? → 1d |  |  |  |
| 16 | Revise Project Schedule |  |  | 1d? → 1d |  | 24d → 14d |  |
| 21 | Revise System Design and Modeling |  |  | 1d? → 1d |  |  |  |
| 24 | Write Test Plan |  |  |  |  | 11d → 1d | resources Matt; Michael → Matt; Michael; Kyle |
| 28 | **Research and Feasibility** | 2014-10-10 A → 2014-10-10 |  |  |  |  |  |
| 29 | MCU Options |  |  | 5d? → 5d |  |  |  |
| 33 | Antenna Geometry |  |  |  |  |  | resources Chris → Chris; Agilent ADS |
| 34 | Antenna Field Simulation |  |  |  |  |  | resources Chris → Chris; Agilent ADS |
| 38 | Decide on Python for GUI Language | 2014-10-17 A → 2014-09-28 A (-19d) |  |  |  |  |  |
| 39 | **Schematic and Layout** |  |  | 20d? → 20d | 92% → 96% |  |  |
| 40 | **Schematic** |  |  | 12d? → 12d |  |  |  |
| 41 | Symbol Creation |  |  | 3d? → 3d |  |  |  |
| 42 | Schematic Design |  |  | 5d? → 5d |  |  |  |
| 43 | Schematic Design Review |  |  | 1d? → 1d |  |  |  |
| 44 | Schematic Design Revision |  |  | 2d? → 2d |  |  |  |
| 45 | Final Schematic Design Review |  |  | 1d? → 1d |  |  |  |
| 46 | **Layout** |  |  | 20d? → 20d | 83% → 92% | 32d → none |  |
| 47 | Footprint Creation |  |  | 4d? → 4d |  |  |  |
| 48 | Layout Design |  |  | 3d? → 3d |  |  |  |
| 49 | Layout Design Review |  |  | 1d? → 1d |  |  |  |
| 50 | Layout Design Revision |  |  | 1d? → 1d |  |  |  |
| 51 | Secondary Layout Review |  |  | 1d? → 1d |  |  | resources Chris; Kyle; Matt; Michael → Chris; Kyle; Matt |
| 52 | Secondary Layout Revision | 2014-11-09 A |  | 2d? → 2d | 0% → 50% |  |  |
| 54 | **Assembly and Debug** |  |  | 6d? → 6d |  | 20d → none |  |
| 56 | RF Matching Network Calibration |  |  | 2d? → 2d |  | 20d → 0d |  |
| 57 | Stencil generation |  |  | 1d? → 1d |  | 20d → 0d |  |
| 59 | MCU "Hello, World!" |  |  | 1d? → 1d |  | 20d → 0d | resources none → Chris |
| 60 | **GUI and Host-PC Programming** |  |  | 24d? → 24d |  | 21d → none |  |
| 61 | Design GUI Layout |  |  | 4d? → 4d |  |  |  |
| 62 | Review GUI Layout |  |  | 1d? → 1d |  |  |  |
| 65 | Add Menu Features |  |  | 5d? → 5d |  | 21d → 0d |  |
| 69 | Establish Communication Between Satellite Unit and Base Station |  |  | 3d? → 3d |  | 2d → 19d |  |
| 70 | Develop Code for Taking Button Input on Satellite Board | 2014-11-22 → 2014-11-23 (+1d) |  | 3d → 2d |  | 2d → 18d | constraint none → start no earlier than 2014-11-23 |

## Version 3 (saved 2014-11-10)

Note of the change: Project Schedule rev 3

Last finish 2014-12-12 → 2014-12-22 (+10d).

Changed:

| ID | Task | Start | Finish | Total float | Predecessors |
| --- | --- | --- | --- | --- | --- |
| 1 | **Wireless Apparatus for Real-Time Classroom feedback** | 2014-09-29 → 2014-10-09 A (+10d) | 2014-12-12 → 2014-12-22 (+10d) |  |  |
| 28 | **Research and Feasibility** | 2014-10-10 A |  |  |  |
| 38 | Decide on Python for GUI Language | 2014-09-28 A → 2014-10-17 A (+19d) |  |  |  |
| 69 | Establish Communication Between Satellite Unit and Base Station |  |  | 19d → 29d | none → 56 |

## Version 4 (saved 2014-11-10)

Note of the change: Made PDF

Last finish 2014-12-22 → 2014-12-12 (-10d).

Changed:

| ID | Task | Finish | Duration | Total float |
| --- | --- | --- | --- | --- |
| 1 | **Wireless Apparatus for Real-Time Classroom feedback** | 2014-12-22 → 2014-12-12 (-10d) | 75d → 65d |  |
| 13 | **Project Schedule** |  | 5d? → 5d | 14d → none |
| 14 | Write Project Schedule |  | 3d? → 3d |  |
